# WBS Teresa martin mejoras

Schedule from MS Project, 2015-04-06 to 2015-06-19, costs in $.

## Calendars

- Estándar: Mon-Fri 09:00-13:00, 15:00-19:00; Sat-Sun off.

## Resources

| Resource | Rate |
| --- | --- |
| Lider | 233 |
| Analista | 125 |
| Diseñador | 149 |
| Programador | 110 |
| Tester | 115 |

## Schedule

| ID | WBS | Task | Duration | Start | Finish | Predecessors | Total slack | Free slack | Constraint | Resources | Work | Cost |
| --- | --- | --- | --- | --- | --- | --- | --- | --- | --- | --- | --- | --- |
| 1 | 1 | **Teresa Martin** | 55d | 2015-04-06 09:00 | 2015-06-19 19:00 |  |  |  |  |  | 552h | 49,333 |
| 2 | 1.1 | **Planeación de proyecto.** | 3.5d | 2015-04-06 09:00 | 2015-04-09 13:00 |  | 5.5d | 0d |  |  | 27h | 3,081 |
| 3 | 1.1.1 | Carta de iniciación del proyecto. | 2h | 2015-04-06 09:00 | 2015-04-06 11:00 |  | 5.62d | 0d |  | Lider | 2h | 238 |
| 4 | 1.1.2 | Minuta de reunión de arranque. | 2h | 2015-04-06 11:00 | 2015-04-06 13:00 | 3 | 5.62d | 0d | start no earlier than 2015-04-06 09:00 | Lider | 2h | 238 |
| 5 | 1.1.3 | Políticas. | 3h | 2015-04-06 15:00 | 2015-04-06 18:00 | 4 | 5.62d | 0d |  | Lider | 3h | 357 |
| 6 | 1.1.4 | Organigrama. | 1h | 2015-04-06 18:00 | 2015-04-06 19:00 | 5 | 5.62d | 0d |  | Lider | 1h | 119 |
| 7 | 1.1.5 | Alcance. | 1h | 2015-04-07 09:00 | 2015-04-07 10:00 | 6 | 5.62d | 0d | start no earlier than 2015-04-07 09:00 | Lider | 1h | 119 |
| 8 | 1.1.6 | Plan de CM | 2h | 2015-04-07 10:00 | 2015-04-07 12:00 | 7 | 5.62d | 0d |  | Lider | 2h | 238 |
| 9 | 1.1.7 | Definicion de ciclo de vida. | 1h | 2015-04-07 12:00 | 2015-04-07 13:00 | 8 | 5.62d | 0d |  |  |  |  |
| 10 | 1.1.8 | Matriz de responsabilidades. | 4h | 2015-04-07 15:00 | 2015-04-07 19:00 | 9 | 5.62d | 0d |  | Lider | 4h | 476 |
| 11 | 1.1.9 | Diagrama de Gantt(Wbs). | 3h | 2015-04-08 09:00 | 2015-04-08 12:00 | 10 | 5.62d | 0d |  |  |  |  |
| 12 | 1.1.10 | Plan de alcance. | 1h | 2015-04-08 12:00 | 2015-04-08 13:00 | 11 | 5.62d | 0d |  | Lider | 1h | 119 |
| 13 | 1.1.11 | Matriz de comunicación y justificación. | 3h | 2015-04-08 15:00 | 2015-04-08 18:00 | 12 | 5.62d | 0.12d |  | Lider | 3h | 357 |
| 14 | 1.1.12 | Plan de proyecto | 4h | 2015-04-09 09:00 | 2015-04-09 13:00 | 13 | 5.5d | 0d | start no earlier than 2015-04-09 09:00 | Analista; Lider | 8h | 820 |
| 15 | 1.2 | **Primera iteracion** | 24.75d | 2015-04-09 15:00 | 2015-05-14 11:00 | 2 | 0.75d | 0d |  |  | 184h | 16,014 |
| 16 | 1.2.1 | **Análisis** | 3.5d | 2015-04-09 15:00 | 2015-04-14 19:00 | 2 | 5.25d | 0d |  |  | 26h | 2,368 |
| 17 | 1.2.1.1 | Evaluar proveedores de req. a entrevistar | 4h | 2015-04-09 15:00 | 2015-04-09 19:00 | 14 | 5.5d | 0d |  | Lider | 4h | 476 |
| 18 | 1.2.1.2 | Definicion de estrategia de recoleccion de req. | 4h | 2015-04-10 09:00 | 2015-04-10 13:00 | 17 | 5.5d | 0d | start no earlier than 2015-04-07 09:00 | Analista | 4h | 344 |
| 19 | 1.2.1.3 | Planificar reuniones de elicitación de req. | 3h | 2015-04-10 15:00 | 2015-04-10 18:00 | 18 | 5.5d | 0.12d |  | Analista | 3h | 258 |
| 20 | 1.2.1.4 | Identificar procesos del sistema. | 3h | 2015-04-13 09:00 | 2015-04-13 12:00 | 19 | 5.38d | 0d | start no earlier than 2015-04-13 09:00 | Analista | 3h | 258 |
| 21 | 1.2.1.5 | Identificar los req. funcionales. | 3h | 2015-04-13 12:00 | 2015-04-13 17:00 | 20 | 5.38d | 0d |  | Analista | 3h | 258 |
| 22 | 1.2.1.6 | Identificar los req. no funcionales. | 1h | 2015-04-13 17:00 | 2015-04-13 18:00 | 21 | 5.38d | 0.12d |  | Analista | 1h | 86 |
| 23 | 1.2.1.7 | Especificación de req. Funcionales y no funcionales | 4h | 2015-04-14 09:00 | 2015-04-14 13:00 | 22 | 5.25d | 0d | start no earlier than 2015-04-14 09:00 | Analista | 4h | 344 |
| 24 | 1.2.1.8 | Gestión de req. Funcionales y no funcionales | 4h | 2015-04-14 15:00 | 2015-04-14 19:00 | 23 | 5.25d | 0d |  | Analista | 4h | 344 |

| ID | WBS | Task | Duration | Start | Finish | Predecessors | Total slack | Free slack | Constraint | Resources | Work | Cost |
| --- | --- | --- | --- | --- | --- | --- | --- | --- | --- | --- | --- | --- |
| 25 | 1.2.2 | **Diseño** | 5.5d | 2015-04-15 09:00 | 2015-04-22 13:00 | 16 | 4.62d | 0d |  |  | 39h | 3,524 |
| 26 | 1.2.2.1 | Justificar el patrón de diseño a utilizar. | 2h | 2015-04-15 09:00 | 2015-04-15 11:00 | 24 | 5.25d | 0d |  | Diseñador | 2h | 206 |
| 27 | 1.2.2.2 | Estructura del Proyecto. | 2h | 2015-04-15 11:00 | 2015-04-15 13:00 | 26 | 5.25d | 0d |  | Analista | 2h | 172 |
| 28 | 1.2.2.3 | Diagrama de actividades. | 2h | 2015-04-15 15:00 | 2015-04-15 17:00 | 27 | 5.25d | 0.25d |  | Analista | 2h | 172 |
| 29 | 1.2.2.4 | Diagramas de casos de uso. | 2h | 2015-04-16 09:00 | 2015-04-16 11:00 | 28 | 5d | 0d | start no earlier than 2015-04-16 09:00 | Analista | 2h | 172 |
| 30 | 1.2.2.5 | Diagramas de secuencia. | 3h | 2015-04-16 11:00 | 2015-04-16 16:00 | 29 | 5d | 0.38d | start no earlier than 2015-04-16 09:00 | Analista | 3h | 258 |
| 31 | 1.2.2.6 | Diagra de clases. | 4h | 2015-04-17 09:00 | 2015-04-17 13:00 | 30 | 4.62d | 0d | start no earlier than 2015-04-17 09:00 | Analista | 4h | 344 |
| 32 | 1.2.2.7 | Diagrama de rol. | 2h | 2015-04-17 15:00 | 2015-04-17 17:00 | 31 | 4.62d | 0d | start no earlier than 2015-04-17 09:00 | Analista | 2h | 172 |
| 33 | 1.2.2.8 | Diagrama de interación. | 2h | 2015-04-17 17:00 | 2015-04-17 19:00 | 32 | 4.62d | 0d | start no earlier than 2015-04-17 09:00 | Analista | 2h | 172 |
| 34 | 1.2.2.9 | Diagrama de componentes. | 2h | 2015-04-20 09:00 | 2015-04-20 11:00 | 33 | 4.62d | 0d | start no earlier than 2015-04-20 09:00 | Analista | 2h | 172 |
| 35 | 1.2.2.10 | Diagrama despliegue. | 2h | 2015-04-20 11:00 | 2015-04-20 13:00 | 34 | 4.62d | 0d | start no earlier than 2015-04-20 09:00 | Analista | 2h | 172 |
| 36 | 1.2.2.11 | **Base de datos.** | 1d | 2015-04-20 15:00 | 2015-04-21 13:00 | 35 | 4.62d |  |  |  | 8h | 688 |
| 37 | 1.2.2.11.1 | Diagrama entidad relación. | 0.5d | 2015-04-20 15:00 | 2015-04-20 19:00 | 35 | 4.62d | 0d |  | Analista | 4h | 344 |
| 38 | 1.2.2.11.2 | Diagrama relacional. | 4h | 2015-04-21 09:00 | 2015-04-21 13:00 | 37 | 4.62d | 0d |  | Analista | 4h | 344 |
| 39 | 1.2.2.12 | Maquetación. | 4h | 2015-04-21 15:00 | 2015-04-21 19:00 | 38 | 4.62d | 0d |  | Diseñador | 4h | 412 |
| 40 | 1.2.2.13 | Mapa de naveción. | 4h | 2015-04-22 09:00 | 2015-04-22 13:00 | 39 | 4.62d |  |  | Diseñador | 4h | 412 |
| 41 | 1.2.3 | **Codificación** | 14d | 2015-04-22 15:00 | 2015-05-12 13:00 | 25 | 1.25d | 0d |  |  | 101h | 8,636 |
| 42 | 1.2.3.1 | Creación de la DB. | 3h | 2015-04-22 15:00 | 2015-04-22 18:00 | 25 | 4.62d | 0d |  | Programador | 3h | 216 |
| 43 | 1.2.3.2 | Conexión a DB. | 2h | 2015-04-22 18:00 | 2015-04-23 10:00 | 42 | 4.62d | 0.88d |  | Programador | 2h | 144 |
| 44 | 1.2.3.3 | **Módulo alumnos** | 5d | 2015-04-24 09:00 | 2015-04-30 19:00 | 43 | 2.75d | 0d |  |  | 32h | 2,800 |
| 45 | 1.2.3.3.1 | Interfaz. | 16h | 2015-04-24 09:00 | 2015-04-27 19:00 | 43 | 3.75d | 0d | start no earlier than 2015-04-24 09:00 | Diseñador | 16h | 1,648 |
| 46 | 1.2.3.3.2 | Alta de alumno. | 6h | 2015-04-28 09:00 | 2015-04-28 17:00 | 45 | 3.75d | 0d |  | Programador | 6h | 432 |
| 47 | 1.2.3.3.3 | Baja de alumno. | 2h | 2015-04-28 17:00 | 2015-04-28 19:00 | 46 | 3.75d | 1d |  | Programador | 2h | 144 |
| 48 | 1.2.3.3.4 | Actualización de alumno. | 5h | 2015-04-30 09:00 | 2015-04-30 16:00 | 47 | 2.75d | 0d | start no earlier than 2015-04-30 09:00 | Programador | 5h | 360 |
| 49 | 1.2.3.3.5 | Consultar alumnos. | 3h | 2015-04-30 16:00 | 2015-04-30 19:00 | 48 | 2.75d | 0d | start no earlier than 2015-04-30 09:00 | Programador | 3h | 216 |

| ID | WBS | Task | Duration | Start | Finish | Predecessors | Total slack | Free slack | Constraint | Resources | Work | Cost |
| --- | --- | --- | --- | --- | --- | --- | --- | --- | --- | --- | --- | --- |
| 50 | 1.2.3.4 | **Módulo pagos** | 1.75d | 2015-05-01 09:00 | 2015-05-04 17:00 | 44 | 2.75d |  |  |  | 14h | 1,132 |
| 51 | 1.2.3.4.1 | Interfaz. | 4h | 2015-05-01 09:00 | 2015-05-01 13:00 | 49 | 2.75d | 0d |  | Diseñador | 4h | 412 |
| 52 | 1.2.3.4.2 | Pago de colegiaturas. | 4h | 2015-05-01 15:00 | 2015-05-01 19:00 | 51 | 2.75d | 0d |  | Programador | 4h | 288 |
| 53 | 1.2.3.4.3 | Editar pago. | 3h | 2015-05-04 09:00 | 2015-05-04 12:00 | 52 | 2.75d | 0d |  | Programador | 3h | 216 |
| 54 | 1.2.3.4.4 | Eliminar pago. | 1h | 2015-05-04 12:00 | 2015-05-04 13:00 | 53 | 2.75d | 0d |  | Programador | 1h | 72 |
| 55 | 1.2.3.4.5 | Consultar pago. | 2h | 2015-05-04 15:00 | 2015-05-04 17:00 | 54 | 2.75d | 0d |  | Programador | 2h | 144 |
| 56 | 1.2.3.5 | **Módulo becas** | 2.75d | 2015-05-04 17:00 | 2015-05-07 13:00 | 55 | 2.5d | 0d |  |  | 20h | 1,750 |
| 57 | 1.2.3.5.1 | Interfaz. | 10h | 2015-05-04 17:00 | 2015-05-05 19:00 | 55 | 2.75d | 0d | finish no earlier than 2015-05-05 19:00 | Diseñador | 10h | 1,030 |
| 58 | 1.2.3.5.2 | Asignar beca. | 3h | 2015-05-06 09:00 | 2015-05-06 12:00 | 57 | 2.75d | 0d |  | Programador | 3h | 216 |
| 59 | 1.2.3.5.3 | Editar beca. | 3h | 2015-05-06 12:00 | 2015-05-06 17:00 | 58 | 2.75d | 0.25d | start no earlier than 2015-05-06 09:00 | Programador | 3h | 216 |
| 60 | 1.2.3.5.4 | Eliminar beca. | 2h | 2015-05-07 09:00 | 2015-05-07 11:00 | 59 | 2.5d | 0d | start no earlier than 2015-05-07 09:00 | Programador | 2h | 144 |
| 61 | 1.2.3.5.5 | Consultar beca. | 2h | 2015-05-07 11:00 | 2015-05-07 13:00 | 60 | 2.5d | 0.5d | start no earlier than 2015-05-07 09:00 | Programador | 2h | 144 |
| 62 | 1.2.3.6 | **Módulo Reportes** | 1.5d | 2015-05-07 15:00 | 2015-05-08 19:00 | 56 | 2d | 0d |  |  | 16h | 1,400 |
| 63 | 1.2.3.6.1 | Interfaz. | 8h | 2015-05-07 15:00 | 2015-05-08 13:00 | 56 | 2.5d |  | finish no earlier than 2015-05-07 19:00 | Diseñador | 8h | 824 |
| 64 | 1.2.3.6.2 | Consultar pagos. | 2h | 2015-05-08 09:00 | 2015-05-08 11:00 | 61 | 2d | 0d | start no earlier than 2015-05-08 09:00 | Programador | 2h | 144 |
| 65 | 1.2.3.6.3 | Consultar alumnos. | 2h | 2015-05-08 11:00 | 2015-05-08 13:00 | 64 | 2d | 0d | start no earlier than 2015-05-08 09:00 | Programador | 2h | 144 |
| 66 | 1.2.3.6.4 | Colsultar becas. | 2h | 2015-05-08 15:00 | 2015-05-08 17:00 | 65 | 2d | 0d | start no earlier than 2015-05-08 09:00 | Programador | 2h | 144 |
| 67 | 1.2.3.6.5 | Consultar ciclos. | 2h | 2015-05-08 17:00 | 2015-05-08 19:00 | 66 | 2d | 0d | start no earlier than 2015-05-08 09:00 | Programador | 2h | 144 |
| 68 | 1.2.3.7 | **Módulo Ciclos** | 1.5d | 2015-05-11 09:00 | 2015-05-12 13:00 | 62 | 1.25d |  |  |  | 14h | 1,194 |
| 69 | 1.2.3.7.1 | Interfaz. | 6h | 2015-05-11 09:00 | 2015-05-11 17:00 | 67 | 2d |  |  | Diseñador | 6h | 618 |
| 70 | 1.2.3.7.2 | Asignar ciclo. | 2h | 2015-05-12 09:00 | 2015-05-12 11:00 |  | 1.25d | 0d | start no earlier than 2015-05-12 09:00 | Programador | 2h | 144 |
| 71 | 1.2.3.7.3 | Editar ciclo. | 2h | 2015-05-12 11:00 | 2015-05-12 13:00 | 70 | 1.25d |  |  | Programador | 2h | 144 |
| 72 | 1.2.3.7.4 | Eliminar ciclo. | 2h | 2015-05-12 11:00 | 2015-05-12 13:00 | 70 | 1.25d |  |  | Programador | 2h | 144 |
| 73 | 1.2.3.7.5 | Consultar ciclo. | 2h | 2015-05-12 11:00 | 2015-05-12 13:00 | 70 | 1.25d | 0d |  | Programador | 2h | 144 |

| ID | WBS | Task | Duration | Start | Finish | Predecessors | Total slack | Free slack | Constraint | Resources | Work | Cost |
| --- | --- | --- | --- | --- | --- | --- | --- | --- | --- | --- | --- | --- |
| 74 | 1.2.4 | **Pruebas** | 1d | 2015-05-12 15:00 | 2015-05-13 13:00 | 41 | 1.25d | 0.5d |  |  | 16h | 1,248 |
| 75 | 1.2.4.1 | Pruebas unitarias. | 4h | 2015-05-12 15:00 | 2015-05-12 19:00 | 73 | 1.75d |  |  | Tester | 4h | 312 |
| 76 | 1.2.4.2 | Pruebas de integración. | 4h | 2015-05-12 15:00 | 2015-05-12 19:00 | 73 | 1.25d | 0d |  | Tester | 4h | 312 |
| 77 | 1.2.4.3 | Pruebas de rendimiento. | 4h | 2015-05-13 09:00 | 2015-05-13 13:00 | 76 | 1.25d |  |  | Tester | 4h | 312 |
| 78 | 1.2.4.4 | Pruebas del sistema. | 4h | 2015-05-13 09:00 | 2015-05-13 13:00 | 76 | 1.25d |  |  | Tester | 4h | 312 |
| 79 | 1.2.5 | Entrega Versión base | 2h | 2015-05-14 09:00 | 2015-05-14 11:00 | 74 | 0.75d | 0d | start no earlier than 2015-05-14 09:00 | Lider | 2h | 238 |
| 80 | 1.3 | **Segunda iteracion** | 14.75d | 2015-05-14 11:00 | 2015-06-03 19:00 | 15 | 0.62d | 0d |  |  | 197h | 17,286 |
| 81 | 1.3.1 | **Análisis versión 0.1** | 1.25d | 2015-05-14 11:00 | 2015-05-15 13:00 | 79 | 0.62d | 0d |  |  | 9h | 873 |
| 82 | 1.3.1.1 | Identificar procesos del sistema. | 3h | 2015-05-14 11:00 | 2015-05-14 16:00 | 79 | 0.75d | 0d |  | Lider | 3h | 357 |
| 83 | 1.3.1.2 | Minuta de reunión. | 2h | 2015-05-14 16:00 | 2015-05-14 18:00 | 82 | 0.75d | 0.12d |  | Analista | 2h | 172 |
| 84 | 1.3.1.3 | Identificar los req. funcionales. | 2h | 2015-05-15 09:00 | 2015-05-15 11:00 | 83 | 0.62d | 0d | start no earlier than 2015-05-15 09:00 | Analista | 2h | 172 |
| 85 | 1.3.1.4 | Identificar los req. no funcionales. | 2h | 2015-05-15 11:00 | 2015-05-15 13:00 | 84 | 0.62d | 0d |  | Analista | 2h | 172 |
| 86 | 1.3.2 | **Diseño versión 0.1** | 1.12d | 2015-05-15 15:00 | 2015-05-18 16:00 | 81 | 0.62d | 0d |  |  | 9h | 808 |
| 87 | 1.3.2.1 | Diagrama de rol. | 2h | 2015-05-15 15:00 | 2015-05-15 17:00 | 85 | 0.62d | 0d |  | Analista | 2h | 172 |
| 88 | 1.3.2.2 | Diagrama de interación. | 2h | 2015-05-15 17:00 | 2015-05-15 19:00 | 87 | 0.62d | 0d |  | Analista | 2h | 172 |
| 89 | 1.3.2.3 | Diagrama de componentes. | 2h | 2015-05-18 09:00 | 2015-05-18 11:00 | 88 | 0.62d | 0d | start no earlier than 2015-05-14 09:00 | Analista | 2h | 172 |
| 90 | 1.3.2.4 | Diagrama despliegue. | 1h | 2015-05-18 11:00 | 2015-05-18 12:00 | 89 | 0.62d | 0d | start no earlier than 2015-05-14 09:00 | Analista | 1h | 86 |
| 91 | 1.3.2.5 | Maquetación. | 1h | 2015-05-18 12:00 | 2015-05-18 13:00 | 90 | 0.62d | 0d |  | Diseñador | 1h | 103 |
| 92 | 1.3.2.6 | Mapa de naveción. | 1h | 2015-05-18 15:00 | 2015-05-18 16:00 | 91 | 0.62d | 0d | start no earlier than 2015-05-14 09:00 | Diseñador | 1h | 103 |
| 93 | 1.3.3 | **Codificación versión 0.1** | 10d | 2015-05-18 16:00 | 2015-06-01 16:00 | 86 | 0.62d | 0d |  |  | 160h | 14,000 |
| 94 | 1.3.3.1 | Módulo alumnos versión0.1. | 16h | 2015-05-18 16:00 | 2015-05-20 16:00 | 92 | 0.62d | 0d |  | Programador; Diseñador | 32h | 2,800 |
| 95 | 1.3.3.2 | Módulo pagos versión0.1. | 16h | 2015-05-20 16:00 | 2015-05-22 16:00 | 94 | 0.62d | 0d |  | Programador; Diseñador | 32h | 2,800 |
| 96 | 1.3.3.3 | Módulo becas versión0.1. | 16h | 2015-05-22 16:00 | 2015-05-26 16:00 | 95 | 0.62d | 0d |  | Programador; Diseñador | 32h | 2,800 |
| 97 | 1.3.3.4 | Módulo reportes versión0.1. | 16h | 2015-05-26 16:00 | 2015-05-28 16:00 | 96 | 0.62d | 0d |  | Programador; Diseñador | 32h | 2,800 |
| 98 | 1.3.3.5 | Módulo ciclos versión0.1. | 16h | 2015-05-28 16:00 | 2015-06-01 16:00 | 97 | 0.62d | 0d |  | Diseñador; Programador | 32h | 2,800 |

| ID | WBS | Task | Duration | Start | Finish | Predecessors | Total slack | Free slack | Resources | Work | Cost |
| --- | --- | --- | --- | --- | --- | --- | --- | --- | --- | --- | --- |
| 99 | 1.3.4 | **Pruebas versión 0.1** | 2d | 2015-06-01 16:00 | 2015-06-03 16:00 | 93 | 0.62d | 0d |  | 16h | 1,248 |
| 100 | 1.3.4.1 | Pruebas unitarias versión0.1. | 4h | 2015-06-01 16:00 | 2015-06-02 10:00 | 98 | 0.62d | 0d | Tester | 4h | 312 |
| 101 | 1.3.4.2 | Pruebas de integración versión0.1. | 4h | 2015-06-02 10:00 | 2015-06-02 16:00 | 100 | 0.62d | 0d | Tester | 4h | 312 |
| 102 | 1.3.4.3 | Pruebas de rendimiento versión0.1. | 4h | 2015-06-02 16:00 | 2015-06-03 10:00 | 101 | 0.62d | 0d | Tester | 4h | 312 |
| 103 | 1.3.4.4 | Pruebas del sistema versión0.1. | 4h | 2015-06-03 10:00 | 2015-06-03 16:00 | 102 | 0.62d |  | Tester | 4h | 312 |
| 104 | 1.3.5 | Entrega versión 0.1 | 3h | 2015-06-03 16:00 | 2015-06-03 19:00 | 99 | 0.62d | 0d | Lider | 3h | 357 |
| 105 | 1.4 | **Tercera interacion** | 8.75d | 2015-06-04 09:00 | 2015-06-16 17:00 | 80 | 0.62d | 0d |  | 123h | 10,735 |
| 106 | 1.4.1 | **Análisis versió 0.2** | 0.12d | 2015-06-04 09:00 | 2015-06-04 10:00 | 104 | 0.62d | 0d |  | 1h | 119 |
| 107 | 1.4.1.1 | Minuta de reunión versión0.2. | 1h | 2015-06-04 09:00 | 2015-06-04 10:00 | 104 | 0.62d | 0d | Lider | 1h | 119 |
| 108 | 1.4.2 | **Diseño version 0.2** | 0.38d | 2015-06-04 10:00 | 2015-06-04 13:00 | 106 | 0.62d | 0d |  | 6h | 618 |
| 109 | 1.4.2.1 | Maquetación versión0.2. | 3h | 2015-06-04 10:00 | 2015-06-04 13:00 | 107 | 0.62d |  | Diseñador | 3h | 309 |
| 110 | 1.4.2.2 | Mapa de naveción versión0.2. | 3h | 2015-06-04 10:00 | 2015-06-04 13:00 | 107 | 0.62d |  | Diseñador | 3h | 309 |
| 111 | 1.4.3 | **Codificación versión0.2** | 6.25d | 2015-06-04 15:00 | 2015-06-12 17:00 | 108 | 0.62d | 0d |  | 100h | 8,750 |
| 112 | 1.4.3.1 | Módulo alumnos versión0.2. | 10h | 2015-06-04 15:00 | 2015-06-05 17:00 |  | 0.62d | 0d | Programador; Diseñador | 20h | 1,750 |
| 113 | 1.4.3.2 | Módulo pagos versión0.2. | 10h | 2015-06-05 17:00 | 2015-06-08 19:00 | 112 | 0.62d | 0d | Programador; Diseñador | 20h | 1,750 |
| 114 | 1.4.3.3 | Módulo becas versión0.2. | 10h | 2015-06-09 09:00 | 2015-06-10 11:00 | 113 | 0.62d | 0d | Programador; Diseñador | 20h | 1,750 |
| 115 | 1.4.3.4 | Módulo reportes versión0.2. | 10h | 2015-06-10 11:00 | 2015-06-11 13:00 | 114 | 0.62d | 0d | Programador; Diseñador | 20h | 1,750 |
| 116 | 1.4.3.5 | Módulo ciclos versión0.2. | 10h | 2015-06-11 15:00 | 2015-06-12 17:00 | 115 | 0.62d |  | Diseñador; Programador | 20h | 1,750 |
| 117 | 1.4.4 | **Pruebas versión 0.2** | 2d | 2015-06-12 17:00 | 2015-06-16 17:00 | 111 | 0.62d |  |  | 16h | 1,248 |
| 118 | 1.4.4.1 | Pruebas de rendimiento versión0.2. | 8h | 2015-06-12 17:00 | 2015-06-15 17:00 |  | 0.62d | 0d | Tester | 8h | 624 |
| 119 | 1.4.4.2 | Pruebas del sistema 0.2. | 8h | 2015-06-15 17:00 | 2015-06-16 17:00 | 118 | 0.62d | 0d | Tester | 8h | 624 |
| 120 | 1.5 | **Implementación** | 0.75d | 2015-06-16 17:00 | 2015-06-17 13:00 | 105 | 0.62d | 0d |  | 6h | 432 |
| 121 | 1.5.1 | Elección del Hosting. | 3h | 2015-06-16 17:00 | 2015-06-17 10:00 | 119 | 0.62d | 0d | Programador | 3h | 216 |
| 122 | 1.5.2 | Copiar los archivos fuente. | 3h | 2015-06-17 10:00 | 2015-06-17 13:00 | 121 | 0.62d | 0d | Programador | 3h | 216 |

| ID | WBS | Task | Duration | Start | Finish | Predecessors | Total slack | Free slack | Constraint | Resources | Work | Cost |
| --- | --- | --- | --- | --- | --- | --- | --- | --- | --- | --- | --- | --- |
| 123 | 1.6 | **Cierre del Proyecto.** | 1.5d | 2015-06-17 15:00 | 2015-06-18 19:00 | 120 | 0.62d | 0d |  |  | 12h | 1,428 |
| 124 | 1.6.1 | Carta de Aceptación. | 1h | 2015-06-17 15:00 | 2015-06-17 16:00 | 122 | 0.62d | 0d |  | Lider | 1h | 119 |
| 125 | 1.6.2 | Acta de cierrede proyectos. | 1h | 2015-06-17 16:00 | 2015-06-17 17:00 | 124 | 0.62d | 0d |  | Lider | 1h | 119 |
| 126 | 1.6.3 | Evaluación de desempeño. | 3h | 2015-06-17 17:00 | 2015-06-18 10:00 | 125 | 0.62d | 0d |  | Lider | 3h | 357 |
| 127 | 1.6.4 | Liberación de recursos. | 2h | 2015-06-18 10:00 | 2015-06-18 12:00 | 126 | 0.62d | 0d |  | Lider | 2h | 238 |
| 128 | 1.6.5 | Lecciones aprendidas. | 3h | 2015-06-18 12:00 | 2015-06-18 17:00 | 127 | 0.62d | 0d | start no earlier than 2015-06-12 09:00 | Lider | 3h | 357 |
| 129 | 1.6.6 | Informe final(cierre). | 2h | 2015-06-18 17:00 | 2015-06-18 19:00 | 128 | 0.62d | 0d |  | Lider | 2h | 238 |
| 130 | 1.7 | Entrega final versión 0.2 | 3h | 2015-06-19 09:00 | 2015-06-19 12:00 | 129, 123 | 0.62d |  |  | Lider | 3h | 357 |
